Schedule from Planner, 2009-12-29 to 2011-03-17.

## Calendars

- Standard: Mon-Thu 08:00-12:00, 08:00-12:00, 13:00-17:00, 13:00-17:00, 23:00-00:00; Fri-Sun off.

## Resources

| Resource |
| --- |
| איתן סודאי |
| מקסים |
| לבן |
| יאנה |
| איתן |
| אייל |
| גיא |
| אורגד |
| יובל |
| טל |
| מארק |

## Schedule

| ID | WBS | Task | Type | Duration | Start | Finish | Predecessors | Complete | Constraint | Resources | Work |
| --- | --- | --- | --- | --- | --- | --- | --- | --- | --- | --- | --- |
| 1 | 1 | **תוכנית פרוייקט** |  |  | 2009-12-29 | 2011-03-17 |  | 61% |  |  | 3784.8h |
| 2 | 1.1 | **אב טיפוס** |  |  | 2009-12-29 | 2010-07-06 |  | 61% |  |  | 3784.8h |
| 3 | 1.1.1 | **מסמכי אפיון ותיכנון** |  |  | 2009-12-29 | 2010-04-04 |  | 87% |  |  | 1357.6h |
| 4 | 1.1.1.1 | מסמך אפיון עלי - מדגים טכנולוגי למערכת מטאורולוגית מרחבית |  |  | 2009-12-29 | 2010-01-13 |  | 100% | 2010-01-12 | איתן | 96h |
| 5 | 1.1.1.2 | מסמך אפיון - פונקציונאליות בסיסית במיפוי |  |  | 2010-01-04 | 2010-02-01 |  | 100% | 2010-01-07 | מקסים | 168h |
| 6 | 1.1.1.3 | בחינת אפשרויות לשימוש במנועי מיפוי |  |  | 2010-01-11 | 2010-01-20 |  | 100% | start no earlier than 2010-01-07 | מקסים | 64h |
| 7 | 1.1.1.4 | אפיון - UI Manager Service |  |  | 2010-01-31 | 2010-02-04 |  | 50% | start no earlier than 2010-01-31 |  |  |
| 8 | 1.1.1.5 | מסמך אפיון - ממשק משתמש |  |  | 2010-02-01 | 2010-02-08 |  | 8% | start no earlier than 2010-01-07 | אייל | 48h |
| 9 | 1.1.1.6 | מסמך אפיון - קליטת מידע גלובלי ומדידים |  |  | 2010-01-04 | 2010-02-03 |  | 100% | start no earlier than 2009-12-31 | לבן | 184h |
| 10 | 1.1.1.7 | מסמך אפיון - קליטת שריגים מקומיים |  |  | 2010-01-04 | 2010-02-01 |  | 100% | start no earlier than 2010-01-04 | לבן; יאנה | 336h |
| 11 | 1.1.1.8 | מסמך אפיון - קליטת צי"חים ושליחת מברקים |  |  | 2010-01-05 | 2010-02-01 |  | 100% |  | יאנה | 160h |
| 12 | 1.1.1.9 | מסמך אפיון - חישוב מברקים |  |  | 2010-02-03 | 2010-02-09 |  | 95% | start no earlier than 2010-02-03 | אייל | 40h |
| 13 | 1.1.1.10 | תיכנון סכמת בסיס הנתונים |  |  | 2010-01-12 | 2010-01-14 |  | 100% | start no earlier than 2010-01-12 | איתן | 24h |
| 14 | 1.1.1.11 | הגדרת ממשקי מערכת |  |  | 2010-02-03 | 2010-02-08 |  | 49% | start no earlier than 2010-01-06 | איתן; גיא; אייל | 93.6h |
| 15 | 1.1.1.12 | ארכיטקטורת מערכת |  |  | 2010-01-17 | 2010-01-24 |  | 100% | 2010-01-21 | איתן | 48h |
| 16 | 1.1.1.13 | מעבר על מסמכי אפיון |  |  | 2010-02-01 | 2010-02-03 |  | 100% | start no earlier than 2010-02-01 | אייל | 24h |
| 17 | 1.1.1.14 | איפיון פיתוח מאובטח |  |  | 2010-02-09 | 2010-02-15 | 8 |  |  | אייל | 40h |
| 18 | 1.1.1.15 | הגדרת ממשק משתמש |  |  | 2010-03-08 | 2010-04-04 |  | 5% | start no earlier than 2010-03-08 | טל [20%] | 32h |
| 19 | 1.1.1.16 | סיום אפיון | milestone | 0d | 2010-02-08 | 2010-02-08 | 5, 6, 9, 10, 11, 13, 14 | 100% | start no earlier than 2010-01-18 |  |  |
| 20 | 1.1.2 | **פיתוח גרסה ראשונה** |  |  | 2010-02-09 | 2010-05-05 | 19 | 51% |  |  | 2155.2h |
| 21 | 1.1.2.1 | בנית בסיס הנתונים והפונקציונאליות הרלוונטית |  |  | 2010-02-09 | 2010-02-16 |  | 95% |  | איתן | 48h |
| 22 | 1.1.2.2 | פיתוח ממשק משתמש ושילוב מנוע מיפוי |  |  | 2010-04-05 | 2010-04-12 | 18 |  | start no earlier than 2010-03-10 | מקסים; אייל | 96h |
| 23 | 1.1.2.3 | פיתוח מנגנון קליטת מדידים |  |  | 2010-02-09 | 2010-03-17 |  | 80% | start no earlier than 2010-01-18 | לבן | 216h |
| 24 | 1.1.2.4 | סימולאטור למערכת מדידה |  |  | 2010-03-18 | 2010-03-21 | 23 |  |  | לבן | 16h |
| 25 | 1.1.2.5 | פיתוח מנגנון קליטת מידע גלובלי |  |  | 2010-02-09 | 2010-03-04 |  | 100% | start no earlier than 2010-01-18 | לבן | 144h |
| 26 | 1.1.2.6 | פיתוח מנגנון קליטת שריגים מקומיים |  |  | 2010-02-09 | 2010-03-15 |  | 80% |  | יאנה | 200h |
| 27 | 1.1.2.7 | סימולאטור לחישוב מודל דיאגנוסטי |  |  | 2010-03-16 | 2010-03-17 | 26 |  |  | יאנה | 16h |
| 28 | 1.1.2.8 | סימולאטור לחישוב מודל פרוגנוסטי |  |  | 2010-03-16 | 2010-03-17 | 26 |  |  | יאנה | 16h |
| 29 | 1.1.2.9 | פיתוח מנגנון קליטת צי"חים |  |  | 2010-02-09 | 2010-03-14 |  | 92% | start no earlier than 2010-01-24 | יאנה; מקסים | 283.2h |
| 30 | 1.1.2.10 | פיתוח מנגנון חישוב ושליחת מברקים |  |  | 2010-02-25 | 2010-03-18 |  | 61% | start no earlier than 2010-02-25 | מקסים; יאנה | 232h |
| 31 | 1.1.2.11 | פיתוח מנגנון קונפיגורציה של המערכת |  |  | 2010-03-21 | 2010-03-24 | 30 | 90% |  | מקסים | 32h |
| 32 | 1.1.2.12 | סימולאטור לעולם הטקטי |  |  | 2010-03-18 | 2010-03-21 | 28 |  |  | יאנה | 16h |
| 33 | 1.1.2.13 | פיתוח תשתיות המערכת |  |  | 2010-02-21 | 2010-03-04 |  | 60% | start no earlier than 2010-02-21 | אייל; מקסים; אורגד | 240h |
| 34 | 1.1.2.14 | הגדרת סביבת עבודה ותמיכת IT |  |  | 2010-02-23 | 2010-03-15 |  | 40% | start no earlier than 2010-02-23 | מארק [20%] | 24h |
| 35 | 1.1.2.15 | איטגרציה |  |  | 2010-04-13 | 2010-04-22 | 24, 22, 29, 25, 31 |  |  | יאנה; אייל; לבן; מקסים | 256h |
| 36 | 1.1.2.16 | סטביליזציאה + תיקוני בגים |  |  | 2010-04-25 | 2010-05-04 | 35 |  |  | אייל; גיא; יאנה; לבן; מקסים | 320h |
| 37 | 1.1.2.17 | סקר קוד פיתוח מאובטח |  |  | 2010-05-05 | 2010-05-05 | 36 |  |  |  |  |
| 38 | 1.1.2.18 | סיום גרסה ראשונה | milestone | 0d | 2010-05-05 | 2010-05-05 | 37 |  |  |  |  |

| ID | WBS | Task | Type | Duration | Start | Finish | Predecessors | Resources | Work |
| --- | --- | --- | --- | --- | --- | --- | --- | --- | --- |
| 39 | 1.1.3 | **בדיקות פנימיות של המערכת** |  |  | 2010-05-06 | 2010-05-19 | 38 |  | 272h |
| 40 | 1.1.3.1 | מסמך בדיקות לממשק משתמש |  |  | 2010-05-06 | 2010-05-10 |  | אייל; מקסים | 48h |
| 41 | 1.1.3.2 | הרצת בדיקות לממשק משתמש |  |  | 2010-05-11 | 2010-05-12 | 40 | לבן | 16h |
| 42 | 1.1.3.3 | תיקוני באגים - ממשק משתמש |  |  | 2010-05-13 | 2010-05-18 | 41 | מקסים; אייל | 64h |
| 43 | 1.1.3.4 | מסמך בדיקות למנגנון קליטת מידע גלובלי |  |  | 2010-05-06 | 2010-05-10 |  | לבן | 24h |
| 44 | 1.1.3.5 | הרצת בדיקות למנגנון קליטת מידע גלובלי |  |  | 2010-05-11 | 2010-05-12 | 43 | מקסים | 16h |
| 45 | 1.1.3.6 | תיקוני באגים - למנגנון קליטת מידע גלובלי |  |  | 2010-05-13 | 2010-05-18 | 44 | לבן | 32h |
| 46 | 1.1.3.7 | מסמך בדיקות צי"חים ומברקים |  |  | 2010-05-06 | 2010-05-10 |  | מקסים | 24h |
| 47 | 1.1.3.8 | הרצת בדיקות ציחים ומברקים |  |  | 2010-05-11 | 2010-05-12 | 46 | יאנה | 16h |
| 48 | 1.1.3.9 | תיקוני באגים - בדיקות ציחים ומברקים |  |  | 2010-05-13 | 2010-05-18 | 47 | מקסים | 32h |
| 49 | 1.1.3.10 | בדיקות חדירה למערכת על פי פיתוח מאובטח |  |  | 2010-05-19 | 2010-05-19 | 48 |  |  |
| 50 | 1.1.3.11 | סיום בדיקות פנימיות ושחרור גרסה ראשונית ללקוח | milestone | 0d | 2010-05-19 | 2010-05-19 | 45, 42, 49 |  |  |
| 51 | 1.1.4 | **בדיקות לקוח** |  |  | 2010-05-20 | 2010-06-02 | 50 |  |  |
| 52 | 1.1.4.1 | בדיקות לקוח |  |  | 2010-05-20 | 2010-05-30 |  |  |  |
| 53 | 1.1.4.2 | תיקוני באגים |  |  | 2010-05-20 | 2010-06-01 |  |  |  |
| 54 | 1.1.4.3 | בדיקות חדירה למערכת על פי פיתוח מאובטח |  |  | 2010-06-02 | 2010-06-02 | 53 |  |  |
| 55 | 1.1.4.4 | סיום בדיקות לקוח | milestone | 0d | 2010-06-02 | 2010-06-02 | 54 |  |  |
| 56 | 1.1.5 | **השלמת גרסה סופית** |  |  | 2010-06-03 | 2010-07-06 | 55 |  |  |
| 57 | 1.1.5.1 | תוספות ועדקונים |  |  | 2010-06-03 | 2010-06-20 |  |  |  |
| 58 | 1.1.5.2 | בדיקות סופיות |  |  | 2010-06-21 | 2010-06-27 | 57 |  |  |
| 59 | 1.1.5.3 | תקוני באגים |  |  | 2010-06-28 | 2010-07-06 | 58 |  |  |
| 60 | 1.1.5.4 | שיכרור גרסה סופית | milestone | 0d | 2010-07-06 | 2010-07-06 | 59 |  |  |
| 61 | 1.2 | **אינטגרציה של המודל עם תוכנת קא"ל באטמט** |  |  | 2010-07-07 | 2010-08-10 | 60 |  |  |
| 62 | 1.2.1 | שינויים בקוד בעקבות האיטגרציה |  |  | 2010-07-07 | 2010-07-22 |  |  |  |
| 63 | 1.2.2 | בצוע בדיקות |  |  | 2010-07-25 | 2010-08-01 | 62 |  |  |
| 64 | 1.2.3 | תיקוני באגים |  |  | 2010-08-02 | 2010-08-10 | 63 |  |  |

| ID | WBS | Task | Start | Finish | Predecessors |
| --- | --- | --- | --- | --- | --- |
| 65 | 1.3 | **איטגרציה מול מערכת מאיה** | 2010-08-11 | 2010-10-03 | 64 |
| 66 | 1.3.1 | שינויים בקוד בעקבות האיטגרציה | 2010-08-11 | 2010-09-07 |  |
| 67 | 1.3.2 | בצוע בדיקות | 2010-09-08 | 2010-09-21 | 66 |
| 68 | 1.3.3 | תיקוני באגים | 2010-09-22 | 2010-10-03 | 67 |
| 69 | 1.4 | **איטגרציה מול צייד** | 2010-10-04 | 2011-01-02 | 68 |
| 70 | 1.4.1 | שינויים בקוד בעקבות האיטגרציה | 2010-10-04 | 2010-11-21 |  |
| 71 | 1.4.2 | בצוע בדיקות | 2010-11-22 | 2010-12-13 | 70 |
| 72 | 1.4.3 | תיקוני באגים | 2010-12-14 | 2011-01-02 | 71 |
| 73 | 1.5 | **איטגרציה כללית** | 2011-01-03 | 2011-03-17 | 72 |
| 74 | 1.5.1 | שינויים בקוד בעקבות האיטגרציה | 2011-01-03 | 2011-01-30 |  |
| 75 | 1.5.2 | בצוע בדיקות | 2011-01-31 | 2011-02-27 | 74 |
| 76 | 1.5.3 | תיקוני באגים | 2011-02-28 | 2011-03-17 | 75 |
