# DSP

Schedule from Planner, 2009-09-14 to 2010-01-19.
RMD Logic

## Calendars

- Default: Mon-Fri 08:00-12:00, 13:00-17:00; Sat-Sun off.

## Resources

| Resource | Notes |
| --- | --- |
| BI Analyst |  |
| Dev3 |  |
| G-Designer |  |
| Dev2 |  |
| Dev1 |  |
| Arch/TL |  |
| QA Engineer |  |
| Dev4 | null |

## Schedule

| ID | WBS | Task | Type | Duration | Start | Finish | Predecessors | Constraint | Resources | Work |
| --- | --- | --- | --- | --- | --- | --- | --- | --- | --- | --- |
| 1 | 1 | **Iteration 1: Design/Architecture and kick-start** |  |  | 2009-09-14 | 2009-09-30 |  |  |  | 216h |
| 2 | 1.1 | Application architecture and discovery |  |  | 2009-09-14 | 2009-09-22 |  | must start on 2009-09-14 | Dev4 | 56h |
| 3 | 1.2 | SVN, Testing Server with continuous integration installation |  |  | 2009-09-22 | 2009-09-24 | 2 | start no earlier than 2009-08-10 | Dev3; Dev2 | 32h |
| 4 | 1.3 | Staging Server installation |  |  | 2009-09-24 | 2009-09-28 | 3, 2 | start no earlier than 2009-08-10 | Dev3; Dev2 | 24h |
| 5 | 1.4 | Application Model & Data Access Layer |  |  | 2009-09-22 | 2009-09-29 | 2 | start no earlier than 2009-04-27 | Arch/TL | 40h |
| 6 | 1.5 | AJAX portlet functionality |  |  | 2009-09-22 | 2009-09-28 | 2 | start no earlier than 2009-08-10 | Dev1 | 32h |
| 7 | 1.6 | Auditing/Logging Layer |  |  | 2009-09-28 | 2009-09-30 | 6, 3 | start no earlier than 2009-03-26 | Dev1 | 16h |
| 8 | 1.7 | Exceptions wrapping |  |  | 2009-09-28 | 2009-09-30 | 4 | start no earlier than 2009-08-10 | Dev2 | 16h |
| 9 | 1.8 | Detailed Architecture Diagram, Integration Server, CI, Development Environment, Code Base are created | milestone | 0d | 2009-09-30 | 2009-09-30 | 7 | start no earlier than 2009-08-10 |  |  |
| 10 | 2 | **Iteration 2: ETL processes creation** |  |  | 2009-09-30 | 2009-10-28 | 1 |  |  | 552h |
| 11 | 2.1 | User Stories Specification |  |  | 2009-09-30 | 2009-10-06 |  | start no earlier than 2009-04-09 | QA Engineer | 32h |
| 12 | 2.2 | Data Model for SDS |  |  | 2009-10-06 | 2009-10-08 | 11 | start no earlier than 2009-08-10 | Arch/TL | 16h |
| 13 | 2.3 | Data Model for EDS |  |  | 2009-10-08 | 2009-10-12 | 12 | start no earlier than 2009-04-16 | Arch/TL | 16h |
| 14 | 2.4 | Data Model for DDS |  |  | 2009-10-12 | 2009-10-19 | 13 | start no earlier than 2009-08-10 | Arch/TL | 40h |
| 15 | 2.5 | Data Dictionary management UI |  |  | 2009-09-30 | 2009-10-02 |  | start no earlier than 2009-08-10 | Dev3 | 16h |
| 16 | 2.6 | Sources Library Management UI |  |  | 2009-10-02 | 2009-10-06 | 15 | start no earlier than 2009-08-10 | Dev3 | 16h |
| 17 | 2.7 | ETL1 configuration |  |  | 2009-09-30 | 2009-10-06 |  | start no earlier than 2009-04-09 | Dev2; Dev1 | 64h |
| 18 | 2.8 | ETL2 configuration |  |  | 2009-10-06 | 2009-10-09 | 17 | start no earlier than 2009-08-10 | Dev2; Dev1 | 40h |
| 19 | 2.9 | ETL3 configuration |  |  | 2009-10-09 | 2009-10-13 | 18 | start no earlier than 2009-08-10 | Dev2; Dev1 | 40h |
| 20 | 2.10 | simple table transformation prototype |  |  | 2009-10-13 | 2009-10-16 | 19 | start no earlier than 2009-08-10 | Dev2; Dev1 | 40h |
| 21 | 2.11 | dimensional dataset transformation prototype |  |  | 2009-10-16 | 2009-10-21 | 20 | start no earlier than 2009-08-10 | Dev2; Dev1; Arch/TL | 64h |
| 22 | 2.12 | Unit Tests Management TOS Component development |  |  | 2009-10-06 | 2009-10-12 | 16 | start no earlier than 2009-08-10 | Dev3 | 32h |
| 23 | 2.13 | Templates Library implementation |  |  | 2009-10-12 | 2009-10-19 | 22 | start no earlier than 2009-08-10 | Dev3 | 40h |
| 24 | 2.14 | QA testing |  |  | 2009-10-21 | 2009-10-23 | 21 | start no earlier than 2009-08-10 | QA Engineer | 24h |
| 25 | 2.15 | Bugsfixing |  |  | 2009-10-23 | 2009-10-27 | 24 | start no earlier than 2009-08-10 | Dev2; Dev1; Arch/TL | 48h |
| 26 | 2.16 | Presentation preparation |  |  | 2009-10-27 | 2009-10-28 | 25 | start no earlier than 2009-08-10 | Dev2; Dev1; Arch/TL | 24h |
| 27 | 2.17 | Presentation of Iteration 2 tasks accepted | milestone | 0d | 2009-10-28 | 2009-10-28 | 26 | start no earlier than 2009-08-10 |  |  |

| ID | WBS | Task | Type | Duration | Start | Finish | Predecessors | Constraint | Resources | Work |
| --- | --- | --- | --- | --- | --- | --- | --- | --- | --- | --- |
| 28 | 3 | **Iteration 3: CMS, Browse** |  |  | 2009-10-28 | 2009-11-23 | 10 |  |  | 480h |
| 29 | 3.1 | User Stories Specification |  |  | 2009-10-28 | 2009-11-04 |  | start no earlier than 2009-08-10 | QA Engineer | 40h |
| 30 | 3.2 | CMS installation |  |  | 2009-10-28 | 2009-10-30 |  | start no earlier than 2009-08-10 | Dev1; Arch/TL | 32h |
| 31 | 3.3 | Home page layout creation |  |  | 2009-10-30 | 2009-11-04 | 30 | start no earlier than 2009-08-10 | Dev2 | 24h |
| 32 | 3.4 | Tour |  |  | 2009-11-04 | 2009-11-05 | 31 | start no earlier than 2009-08-10 | Dev2 | 8h |
| 33 | 3.5 | Prising, About, Support, Blog |  |  | 2009-11-05 | 2009-11-09 | 32 | start no earlier than 2009-08-10 | Dev2 | 16h |
| 34 | 3.6 | Sign up process |  |  | 2009-10-28 | 2009-10-29 |  | start no earlier than 2009-08-10 | Dev3; Dev2 | 16h |
| 35 | 3.7 | Category view |  |  | 2009-10-29 | 2009-11-04 | 34 | start no earlier than 2009-08-10 | Dev3 | 32h |
| 36 | 3.8 | Subcategory view |  |  | 2009-11-04 | 2009-11-12 | 35 | start no earlier than 2009-08-10 | Dev3 | 48h |
| 37 | 3.9 | **Data set view** |  |  | 2009-10-30 | 2009-11-13 | 30 |  |  | 152h |
| 38 | 3.9.1 | Data |  |  | 2009-10-30 | 2009-11-04 |  | start no earlier than 2009-08-10 | Dev1; Arch/TL | 48h |
| 39 | 3.9.2 | Graph |  |  | 2009-11-04 | 2009-11-11 | 38 | start no earlier than 2009-08-10 | Dev1; Arch/TL | 72h |
| 40 | 3.9.3 | Details |  |  | 2009-11-11 | 2009-11-13 | 39 | start no earlier than 2009-08-10 | Arch/TL | 16h |
| 41 | 3.9.4 | Share |  |  | 2009-11-11 | 2009-11-13 | 39 | start no earlier than 2009-08-10 | Dev1 | 16h |
| 42 | 3.10 | QA testing |  |  | 2009-11-13 | 2009-11-18 | 41 | start no earlier than 2009-08-10 | QA Engineer | 24h |
| 43 | 3.11 | Bugsfixing |  |  | 2009-11-18 | 2009-11-20 | 42 | start no earlier than 2009-08-10 | Dev3; Dev2; Dev1; Arch/TL | 64h |
| 44 | 3.12 | Presentation preparation |  |  | 2009-11-20 | 2009-11-23 | 43 | start no earlier than 2009-08-10 | Dev2; Dev1; Arch/TL | 24h |
| 45 | 3.13 | Presentation of Iteration 3 tasks accepted | milestone | 0d | 2009-11-23 | 2009-11-23 | 44 | start no earlier than 2009-08-10 |  |  |
| 46 | 4 | **Iteration 4: Browse-Dashboard-My data** |  |  | 2009-11-23 | 2009-12-17 | 28 |  |  | 488h |
| 47 | 4.1 | User Stories Specification |  |  | 2009-11-23 | 2009-11-30 |  | start no earlier than 2009-08-10 | QA Engineer | 40h |
| 48 | 4.2 | **Data set view** |  |  | 2009-11-23 | 2009-11-27 |  |  |  | 112h |
| 49 | 4.2.1 | Export |  |  | 2009-11-23 | 2009-11-24 |  | start no earlier than 2009-08-10 | Dev1; Arch/TL | 24h |
| 50 | 4.2.2 | Rate |  |  | 2009-11-24 | 2009-11-25 | 49 | start no earlier than 2009-08-10 | Arch/TL | 8h |
| 51 | 4.2.3 | Comments |  |  | 2009-11-24 | 2009-11-25 | 49 | start no earlier than 2009-08-10 | Arch/TL | 8h |
| 52 | 4.2.4 | Tag/related datasets |  |  | 2009-11-23 | 2009-11-24 |  | start no earlier than 2009-08-10 | Dev2 | 8h |
| 53 | 4.2.5 | Notifications |  |  | 2009-11-24 | 2009-11-26 | 52 | start no earlier than 2009-08-10 | Dev2 | 16h |
| 54 | 4.2.6 | saved views |  |  | 2009-11-23 | 2009-11-25 |  | start no earlier than 2009-08-10 | Dev3 | 16h |
| 55 | 4.2.7 | Dataset schedule |  |  | 2009-11-25 | 2009-11-27 | 51 | start no earlier than 2009-08-10 | Dev3; Dev1; Arch/TL | 32h |

| ID | WBS | Task | Type | Duration | Start | Finish | Predecessors | Constraint | Resources | Work |
| --- | --- | --- | --- | --- | --- | --- | --- | --- | --- | --- |
| 56 | 4.3 | **Dashboard** |  |  | 2009-11-26 | 2009-12-03 | 53 |  |  | 144h |
| 57 | 4.3.1 | Quickstart Dashboard |  |  | 2009-11-26 | 2009-12-01 |  | start no earlier than 2009-08-10 | Dev2 | 24h |
| 58 | 4.3.2 | Create Dashboard |  |  | 2009-11-27 | 2009-11-27 | 55 | start no earlier than 2009-08-10 | Dev3; Dev1; Arch/TL | 24h |
| 59 | 4.3.3 | Edit Dashboard |  |  | 2009-11-27 | 2009-12-01 | 58 | start no earlier than 2009-08-10 | Dev3; Dev1; Arch/TL | 40h |
| 60 | 4.3.4 | Switch Dashboards |  |  | 2009-12-01 | 2009-12-03 | 57 | start no earlier than 2009-08-10 | Dev2 | 16h |
| 61 | 4.3.5 | Dashboard Widget |  |  | 2009-12-01 | 2009-12-03 | 59 | start no earlier than 2009-08-10 | Dev3; Dev1; Arch/TL | 40h |
| 62 | 4.4 | Request data |  |  | 2009-12-03 | 2009-12-03 | 61 | start no earlier than 2009-08-10 | Dev1; Arch/TL | 16h |
| 63 | 4.5 | **Upload and manage My data** |  |  | 2009-12-03 | 2009-12-08 | 60 |  |  | 56h |
| 64 | 4.5.1 | Upload/view data |  |  | 2009-12-03 | 2009-12-07 |  | start no earlier than 2009-08-10 | Dev2 | 16h |
| 65 | 4.5.2 | Dataset view |  |  | 2009-12-07 | 2009-12-08 | 64 | start no earlier than 2009-08-10 | Dev3; Dev2; Dev1; Arch/TL | 40h |
| 66 | 4.6 | QA testing |  |  | 2009-12-08 | 2009-12-14 | 65 | start no earlier than 2009-08-10 | QA Engineer | 32h |
| 67 | 4.7 | Bugsfixing |  |  | 2009-12-14 | 2009-12-16 | 66 | start no earlier than 2009-08-10 | Dev3; Dev2; Dev1; Arch/TL | 64h |
| 68 | 4.8 | Presentaton preparation |  |  | 2009-12-16 | 2009-12-17 | 67 | start no earlier than 2009-08-10 | Dev2; Dev1; Arch/TL | 24h |
| 69 | 4.9 | Presentation of Iteration 4 tasks accepted | milestone | 0d | 2009-12-17 | 2009-12-17 | 68 | start no earlier than 2009-08-10 |  |  |
| 70 | 5 | **Iteration 5: My Account-Search-Administration** |  |  | 2009-12-17 | 2010-01-13 | 46 |  |  | 496h |
| 71 | 5.1 | User Stories Specification |  |  | 2009-12-17 | 2009-12-21 |  | start no earlier than 2009-08-10 | Dev2; QA Engineer | 40h |
| 72 | 5.2 | My Account |  |  | 2009-12-17 | 2009-12-22 |  | start no earlier than 2009-08-10 | Dev1 | 24h |
| 73 | 5.3 | Search (by tags) |  |  | 2009-12-22 | 2009-12-25 | 72 | start no earlier than 2009-08-10 | Dev1 | 24h |
| 74 | 5.4 | **Administration** |  |  | 2009-12-17 | 2009-12-29 |  |  |  | 136h |
| 75 | 5.4.1 | User Manager |  |  | 2009-12-17 | 2009-12-21 |  | start no earlier than 2009-08-10 | Arch/TL | 16h |
| 76 | 5.4.2 | Biling manager |  |  | 2009-12-17 | 2009-12-21 |  | start no earlier than 2009-08-10 | Dev2 | 16h |
| 77 | 5.4.3 | Data publishing |  |  | 2009-12-17 | 2009-12-21 |  | start no earlier than 2009-08-10 | Dev3 | 16h |
| 78 | 5.4.4 | Data request queue |  |  | 2009-12-21 | 2009-12-22 | 75 | start no earlier than 2009-08-10 | Arch/TL | 8h |
| 79 | 5.4.5 | Data backlog |  |  | 2009-12-21 | 2009-12-22 | 76 | start no earlier than 2009-08-10 | Dev2 | 8h |
| 80 | 5.4.6 | Data refresh |  |  | 2009-12-21 | 2009-12-23 | 77 | start no earlier than 2009-08-10 | Dev3 | 16h |
| 81 | 5.4.7 | Performance |  |  | 2009-12-22 | 2009-12-24 | 78 | start no earlier than 2009-08-10 | Arch/TL | 16h |
| 82 | 5.4.8 | Web Analytics |  |  | 2009-12-22 | 2009-12-23 | 79 | start no earlier than 2009-08-10 | Dev2 | 8h |
| 83 | 5.4.9 | CRM integration |  |  | 2009-12-23 | 2009-12-29 | 80 | start no earlier than 2009-08-10 | Dev3 | 32h |
| 84 | 5.5 | ETL Optimization |  |  | 2009-12-29 | 2010-01-05 | 74 | start no earlier than 2009-08-10 | Dev3; Dev2; Dev1; Arch/TL | 160h |
| 85 | 5.6 | QA testing |  |  | 2010-01-05 | 2010-01-08 | 84 | start no earlier than 2009-08-10 | QA Engineer | 24h |
| 86 | 5.7 | Bugsfixing |  |  | 2010-01-08 | 2010-01-12 | 85 | start no earlier than 2009-08-10 | Dev3; Dev2; Dev1; Arch/TL | 64h |
| 87 | 5.8 | Presentation preparation |  |  | 2010-01-12 | 2010-01-13 | 86 | start no earlier than 2009-08-10 | Dev2; Dev1; Arch/TL | 24h |
| 88 | 5.9 | Presentation of Iteration 5 tasks accepted | milestone | 0d | 2010-01-13 | 2010-01-13 | 87 | start no earlier than 2009-08-10 |  |  |
| 89 | 6 | Deployment to EC2 |  |  | 2010-01-13 | 2010-01-19 | 87 | start no earlier than 2009-08-10 | Dev2; Dev1; Arch/TL | 96h |
| 90 | 7 | Production Environment accepted | milestone | 0d | 2010-01-19 | 2010-01-19 | 89 | start no earlier than 2009-08-10 |  |  |
