Schedule from Planner, 2008-06-01 to 2008-09-03.
B4UBUILD.COM - http://www.b4ubuild.com

## Calendars

- Standard: Mon-Fri 08:00-12:00, 13:00-17:00; Sat-Sun off.

## Resources

| Resource |
| --- |
| Sales Department |
| Construction Dept. |
| Sales Dept. |
| Client |
| County |
| County Sediment Control Inspector |
| Sediment Control Inspector |
| Department of Permits & Licenses |
| Building Inspector |
| Mason |
| Civil Engineer |
| Concrete Subcontractor |
| Concrete Subcontractor |
| Excavation Subcontractor |
| Masonry Subcontractor |
| Block Masonry Subcontractor |
| Steel Supplier |
| Lumber Supplier |
| Waterproofing Subcontractor |
| Lender |
| Framing Subcontractor |
| Pest Control Subcontractor |
| Mechanical Subcontractor |
| Plumbing Subcontractor |
| Field Superintendent |
| Plumbing Inspector |
| Electrical Subcontractor |
| Alarm Subcontractor |
| Client's Subcontractor |
| Electrical Inspector |
| Roofing Subcontractor |
| Exterior Trim Subcontractor |
| Brick Masonry Subcontractor |
| Insulation Subcontractor |
| BGE Inspector |
| Drywall Subcontractor |
| Painting Subcontractor |
| Trim Supplier |
| Interior Trim Subcontractor |
| Cabinet Subcontractor |
| Deck Subcontractor |
| Driveway Subcontractor |
| Seeding Subcontractor |
| Hardware Subcontractor |
| Mirror Subcontractor |
| Tile Subcontractor |
| Hardwood Floor Subcontractor |
| Carpet Subcontractor |
| Department of Licensing & Permits |
| Paint Subcontractor |
| Window Cleaning Subcontractor |
| Cleaning Subcontractor |
| Superintendent |
| Builder |
| Punch Out Crew |
| Stucco Subcontractor |
| Sales Manager |
| Construction Manager |
| Project Manager |

## Schedule

| ID | WBS | Task | Type | Duration | Start | Finish | Predecessors | Constraint | Resources | Work |
| --- | --- | --- | --- | --- | --- | --- | --- | --- | --- | --- |
| 1 | 1 | **b4ubuild_sample_07a** |  |  | 2008-06-01 | 2008-09-03 |  |  |  | 8448h |
| 2 | 1.1 | **Contracts** |  | 0d | 2008-06-01 | 2008-06-01 |  |  |  |  |
| 3 | 1.1.1 | Supply Lot Sale Agreement | milestone | 0d | 2008-06-01 | 2008-06-01 |  |  | Builder |  |
| 4 | 1.1.2 | Supply Construction Agreement | milestone | 0d | 2008-06-01 | 2008-06-01 |  |  | Builder |  |
| 5 | 1.1.3 | Supply Contract Plans | milestone | 0d | 2008-06-01 | 2008-06-01 | 4 |  | Builder |  |
| 6 | 1.1.4 | Supply Contract Specifications | milestone | 0d | 2008-06-01 | 2008-06-01 | 4 |  | Builder |  |
| 7 | 1.1.5 | Supply Contract Site Plan | milestone | 0d | 2008-06-01 | 2008-06-01 | 4 |  | Builder |  |
| 8 | 1.1.6 | Secure Financing | milestone | 0d | 2008-06-01 | 2008-06-01 |  |  | Client |  |
| 9 | 1.1.7 | Construction Loan Settlement | milestone | 0d | 2008-06-01 | 2008-06-01 |  |  | Client |  |
| 10 | 1.2 | **Document Review & Revision** |  |  | 2008-06-02 | 2008-07-04 |  |  |  | 2624h |
| 11 | 1.2.1 | Review & Finalize Plans |  |  | 2008-06-02 | 2008-06-20 | 5 |  | Builder | 960h |
| 12 | 1.2.2 | Review & Finalize Specifications |  |  | 2008-06-02 | 2008-06-27 | 6 |  | Builder | 1280h |
| 13 | 1.2.3 | Review & Finalize Site Plan |  |  | 2008-06-23 | 2008-06-23 | 7, 11 |  | Builder | 64h |
| 14 | 1.2.4 | Print Construction Drawings |  |  | 2008-06-30 | 2008-07-04 | 11, 12, 13 |  | Builder | 320h |
| 15 | 1.2.5 | Approve Revised Plans | milestone | 0d | 2008-07-04 | 2008-07-04 | 14 |  | Client |  |
| 16 | 1.2.6 | Approve Revised Specifications | milestone | 0d | 2008-07-04 | 2008-07-04 | 14 |  | Client |  |
| 17 | 1.2.7 | Approve Revised Site Plan | milestone | 0d | 2008-07-04 | 2008-07-04 | 14 |  | Client |  |
| 18 | 1.3 | **Bids & Contracts** |  |  | 2008-07-07 | 2008-08-07 |  |  |  | 1984h |
| 19 | 1.3.1 | Make Copies of Plans |  |  | 2008-07-07 | 2008-07-09 | 15 |  | Builder | 192h |
| 20 | 1.3.2 | Make Copies of Specifications |  |  | 2008-07-07 | 2008-07-08 | 16 |  | Builder | 128h |
| 21 | 1.3.3 | Distribute Plans & Specifications |  |  | 2008-07-10 | 2008-07-10 | 19, 20 | start no earlier than 1996-08-17 | Builder | 64h |
| 22 | 1.3.4 | Receive Bids |  |  | 2008-07-11 | 2008-07-24 | 21 | start no earlier than 1996-08-17 | Builder | 640h |
| 23 | 1.3.5 | **Review Bids** |  |  | 2008-07-25 | 2008-07-31 |  |  |  | 640h |
| 24 | 1.3.5.1 | Sales |  |  | 2008-07-25 | 2008-07-31 | 22 |  | Builder | 320h |
| 25 | 1.3.5.2 | Construction |  |  | 2008-07-25 | 2008-07-31 | 22 |  | Builder | 320h |
| 26 | 1.3.6 | Execute Subcontractor Agreements |  |  | 2008-08-01 | 2008-08-07 | 24 | start no earlier than 1996-08-17 | Builder | 320h |

Notes:
- 1: This file is a partial schedule for trial use & inspection purposes only. Should you wish to purchase the file that contains the entire schedule, visit: www.B4UBUILD.COM You may also send a check or money order in the amount of $20.00 (USD) payable to: B4UBUILD.COM 10 Owl Branch Lane Parkton, MD 21120-9522 Please include your email address and registered owner contact information in your correspondence so that the full working file and a password, which unlocks it, may be sent to you.

| ID | WBS | Task | Type | Duration | Start | Finish | Predecessors | Resources | Work |
| --- | --- | --- | --- | --- | --- | --- | --- | --- | --- |
| 27 | 1.4 | **Grading & Building Permits** |  |  | 2008-07-07 | 2008-07-29 |  |  | 1664h |
| 28 | 1.4.1 | Schedule lot stake-out |  |  | 2008-07-07 | 2008-07-07 | 14 | Builder | 64h |
| 29 | 1.4.2 | Stake lot |  |  | 2008-07-11 | 2008-07-11 | 28 | Civil Engineer | 64h |
| 30 | 1.4.3 | File Grading Permit Application |  |  | 2008-07-07 | 2008-07-07 | 17 | Builder | 64h |
| 31 | 1.4.4 | File Building Permit Application |  |  | 2008-07-07 | 2008-07-09 | 15, 16, 17 | Builder | 192h |
| 32 | 1.4.5 | Post Lot Identification |  |  | 2008-07-14 | 2008-07-14 | 29, 30, 31 | Builder | 64h |
| 33 | 1.4.6 | Meet Sediment Control Inspector |  |  | 2008-07-15 | 2008-07-15 | 30, 29, 32 | Builder | 64h |
| 34 | 1.4.7 | Walk Lot w/ Owner |  |  | 2008-07-16 | 2008-07-16 | 33 | Builder | 64h |
| 35 | 1.4.8 | Install Construction Entrance |  |  | 2008-07-17 | 2008-07-17 | 33, 34 | Excavation Subcontractor | 64h |
| 36 | 1.4.9 | Install Sediment Controls |  |  | 2008-07-17 | 2008-07-18 | 33, 34 | Excavation Subcontractor | 128h |
| 37 | 1.4.10 | Sediment Control Insp. |  |  | 2008-07-21 | 2008-07-21 | 35, 36 | Sediment Control Inspector | 64h |
| 38 | 1.4.11 | Grading Permit Issued |  |  | 2008-07-22 | 2008-07-22 | 37 | Sediment Control Inspector | 64h |
| 39 | 1.4.12 | County Permit Process |  |  | 2008-07-10 | 2008-07-23 | 31 | Department of Permits & Licenses | 640h |
| 40 | 1.4.13 | Building Permit Approved |  |  | 2008-07-24 | 2008-07-24 | 39, 38 | Department of Permits & Licenses | 64h |
| 41 | 1.4.14 | Pay Permit Fees and Excise Taxes |  |  | 2008-07-29 | 2008-07-29 | 40 | Builder | 64h |
| 42 | 1.4.15 | Building Permit Issued | milestone | 0d | 2008-07-29 | 2008-07-29 | 41 | Department of Permits & Licenses |  |
| 43 | 1.5 | **Site Work** |  |  | 2008-07-23 | 2008-07-31 |  |  | 512h |
| 44 | 1.5.1 | Clear Lot |  |  | 2008-07-23 | 2008-07-25 | 38 | Excavation Subcontractor | 192h |
| 45 | 1.5.2 | Strip Topsoil & Stockpile |  |  | 2008-07-28 | 2008-07-28 | 44 | Excavation Subcontractor | 64h |
| 46 | 1.5.3 | Stake Lot for Excavation |  |  | 2008-07-28 | 2008-07-28 | 44 | Civil Engineer | 64h |
| 47 | 1.5.4 | Rough grade lot |  |  | 2008-07-29 | 2008-07-29 | 44, 46 | Excavation Subcontractor | 64h |
| 48 | 1.5.5 | Excavate for foundation |  |  | 2008-07-30 | 2008-07-31 | 40, 46, 44, 47 | Excavation Subcontractor | 128h |
| 49 | 1.6 | **Foundation** |  |  | 2008-08-01 | 2008-09-03 |  |  | 1664h |
| 50 | 1.6.1 | Layout footings |  |  | 2008-08-01 | 2008-08-01 | 48 | Concrete Subcontractor | 64h |
| 51 | 1.6.2 | Dig Footings & Install Reinforcing |  |  | 2008-08-04 | 2008-08-04 | 50 | Concrete Subcontractor | 64h |
| 52 | 1.6.3 | Footing Inspection | milestone | 0d | 2008-08-04 | 2008-08-04 | 51 | Building Inspector |  |
| 53 | 1.6.4 | Pour footings |  |  | 2008-08-05 | 2008-08-05 | 52 | Concrete Subcontractor | 64h |
| 54 | 1.6.5 | Pin Footings |  |  | 2008-08-06 | 2008-08-06 | 53 | Civil Engineer | 64h |
| 55 | 1.6.6 | Stock Block, Mortar, Sand |  |  | 2008-08-07 | 2008-08-07 | 54 | Block Masonry Subcontractor | 64h |
| 56 | 1.6.7 | Build Block Foundation |  |  | 2008-08-08 | 2008-08-28 | 54, 55 | Block Masonry Subcontractor | 960h |
| 57 | 1.6.8 | Foundation Certification | milestone | 0d | 2008-08-28 | 2008-08-28 | 56 | Civil Engineer |  |
| 58 | 1.6.9 | Draw #1 (Location Survey) | milestone | 0d | 2008-08-28 | 2008-08-28 | 57 | Lender |  |
| 59 | 1.6.10 | Fill Block Cores w/ Concrete |  |  | 2008-08-29 | 2008-08-29 | 56 | Block Masonry Subcontractor | 64h |
| 60 | 1.6.11 | Steel Delivery |  |  | 2008-09-01 | 2008-09-01 | 59 | Steel Supplier | 64h |
| 61 | 1.6.12 | Set Lintels, Bolts, Cap Block |  |  | 2008-09-02 | 2008-09-03 | 60 | Block Masonry Subcontractor | 128h |
| 62 | 1.6.13 | Lumber Delivery |  |  | 2008-09-01 | 2008-09-01 | 59 | Lumber Supplier | 64h |
| 63 | 1.6.14 | Waterproofing and Drain Tile |  |  | 2008-09-02 | 2008-09-02 | 62 | Waterproofing Subcontractor | 64h |
